# Simple Project Plan

How a schedule from MS Project changed from version to version. A marks actual dates.

## Version 1 (saved 2017-11-08)

| ID | WBS | Task | Duration | Start | Finish | Predecessors | Complete | Total float |
| --- | --- | --- | --- | --- | --- | --- | --- | --- |
| 1 | 1 | **9-Advance search needs to include customized metadata fields** | 1d? | 2017-11-02 | 2017-11-02 |  |  |  |
| 2 |  | 元数据自定义CMAPI接口实现 | 1d | 2017-11-07 | 2017-11-07 |  |  |  |
| 3 |  | CMWEB高级搜索元数据自定义实现 | 1d | 2017-11-02 | 2017-11-02 |  |  |  |
| 4 |  | 测试 | 1d | 2017-11-02 | 2017-11-02 |  |  |  |
| 5 | 2 | **11-Advance search needs to include customized metadata fields** | 1d? | 2017-11-02 A | 2017-11-02 |  |  |  |
| 6 |  | 元数据自定义CMAPI接口实现 | 1d | 2017-11-02 A | 2017-11-08 | 2 |  |  |
| 7 |  | Premiere高级搜索元数据自定义实现 | 1d | 2017-11-02 | 2017-11-02 |  |  |  |
| 8 |  | 测试 | 1d | 2017-11-02 | 2017-11-02 |  |  |  |
| 9 | 3 | **24-Adobe Premiere plugin: Rundown register** | 2d | 2017-11-02 A | 2017-11-03 |  | 33% | 0d |
| 10 |  | CMWEB插件里实现 | 1d | 2017-11-02 | 2017-11-02 |  |  |  |
| 11 |  | 合成后注册窗口实现 | 1d | 2017-11-02 A | 2017-11-02 A |  | 100% |  |
| 12 |  | 测试 | 1d | 2017-11-03 | 2017-11-03 |  |  |  |
| 13 | 4 | **37-WEB CM save current frame as Image from Hi-Res** | 4d | 2017-11-09 | 2017-11-14 |  |  |  |
| 14 |  | NJG接口实现（srcpath,dstpath,frameno,width,height）性能要求<1s | 3d | 2017-11-09 | 2017-11-13 |  |  |  |
| 15 |  | CMAPI接口实现 | 4d | 2017-11-09 | 2017-11-14 | 6 |  |  |
| 16 |  | CMWEB界面实现 | 1d | 2017-11-09 | 2017-11-09 |  |  |  |
| 17 | 5 | **40-Web Editor support After Effect CG template** | 29d? | 2017-11-02 A | 2017-12-12 |  | 4% | 0d |
| 18 |  | CMAPI接口实现 | 1d | 2017-11-02 A | 2017-11-02 A |  | 100% |  |
| 19 | 5.2 | **执行器实现** | 20d? | 2017-11-02 | 2017-11-29 |  |  |  |
| 20 |  | 生成JSX,AEP | 5d | 2017-11-08 | 2017-11-14 |  |  |  |
| 21 |  | restApi收进度 | 5d | 2017-11-15 | 2017-11-21 | 20 |  |  |
| 22 |  | Render调ME接口 | 2d | 2017-11-22 | 2017-11-23 | 21 |  |  |
| 23 | 5.3 | **ME Plugin Server** | 1d? | 2017-11-02 | 2017-11-02 |  |  |  |
| 24 |  | Server框架 | 5d | 2017-11-24 | 2017-11-30 | 22 |  |  |
| 25 |  | restApi接收任务 | 5d | 2017-12-01 | 2017-12-07 | 24 |  |  |
| 26 |  | 进度、状态回调 | 3d | 2017-12-08 | 2017-12-12 | 25 |  |  |
| 27 |  | JOVE实现 | 1d | 2017-11-02 | 2017-11-02 |  |  |  |
| 28 | 6 | **44-facebook publish support add link onto picture while publish the picture** | 6d | 2017-11-14 | 2017-11-21 |  |  |  |
| 29 |  | 调研 | 3d | 2017-11-14 | 2017-11-16 |  |  |  |
| 30 |  | CMAPI接口实现 | 2d | 2017-11-17 | 2017-11-20 | 29 |  |  |
| 31 |  | SNS功能实现 | 1d | 2017-11-21 | 2017-11-21 | 30 |  |  |
| 32 |  | CMWEB界面实现 | 1d | 2017-11-14 | 2017-11-14 |  |  |  |
| 33 | 7 | **46-Hive must be able to add Headlines to videos published on social media** | 5d | 2017-11-22 | 2017-11-28 |  |  |  |
| 34 |  | CMAPI接口实现 | 1d | 2017-11-22 | 2017-11-22 | 31 |  |  |
| 35 |  | 分片过多处理 | 1d | 2017-11-23 | 2017-11-23 | 34 |  |  |
| 36 |  | token权限文档 | 1d | 2017-11-24 | 2017-11-24 | 35 |  |  |
| 37 |  | 文档整理 | 1d | 2017-11-27 | 2017-11-27 | 36 |  |  |
| 38 |  | SNS功能实现 | 1d | 2017-11-28 | 2017-11-28 | 37 |  |  |
| 39 |  | CMWEB功能实现 | 1d | 2017-11-02 | 2017-11-02 |  |  |  |
| 40 | 8 | **47-Send to Twitter support clip duration> 30s** | 8d | 2017-11-29 | 2017-12-08 |  |  |  |
| 41 | 8.1 | **SNS接口实现** | 1d | 2017-11-29 | 2017-11-29 |  |  |  |
| 42 |  | upload_init | 2d | 2017-11-29 | 2017-11-30 | 38 |  |  |
| 43 |  | upload_append | 2d | 2017-12-01 | 2017-12-04 | 42 |  |  |
| 44 |  | upload_finalize | 2d | 2017-12-05 | 2017-12-06 | 43 |  |  |
| 45 |  | tweet | 2d | 2017-12-07 | 2017-12-08 | 44 |  |  |
| 46 | 9 | **48-2 Ability to keep a record for SNS publish** | 28d | 2017-11-15 | 2017-12-22 |  |  |  |
| 47 |  | CMAPI接口实现 | 3d | 2017-11-15 | 2017-11-17 | 15 |  |  |
| 48 |  | SNS实现 | 2d | 2017-12-11 | 2017-12-12 | 45 |  |  |
| 49 |  | CMWEB实现 | 1d | 2017-11-15 | 2017-11-15 |  |  |  |
| 50 | 10 | **55-Save "SOM" "EOM" from Web CM** | 13d | 2017-11-03 | 2017-11-21 |  |  | 0d |
| 51 |  | CMAPI接口实现 | 2d | 2017-11-20 | 2017-11-21 | 47 |  |  |
| 52 |  | CMWEB实现 | 1d | 2017-11-03 | 2017-11-03 |  |  |  |
| 53 | 11 | **62-one generation** | 10d? | 2017-11-29 | 2017-12-12 |  |  | 0d |
| 54 |  | save relation | 5d | 2017-11-29 | 2017-12-05 |  |  |  |
| 55 |  | get relation | 5d | 2017-12-06 | 2017-12-12 |  |  |  |
| 56 |  | delete relation（暂不考虑，方案需要与HIVE讨论） | 1d? | 2017-11-29 | 2017-11-29 |  |  |  |
| 57 | 12 | **69-Adobe Remote Media Encoder Supporting (TBD)** | 2d | 2017-12-27 | 2017-12-28 |  |  | 0d |
| 58 |  | 调研 | 2d | 2017-12-27 | 2017-12-28 | 68 |  |  |
| 59 |  | 72-Zeddis DM - Premiere /AE Plugin Installation | 1d | 2017-11-02 | 2017-11-02 |  |  |  |
| 60 |  | 75- Use HTTPS protocol in our web tools and any other HTTP connection | 1d | 2017-11-20 | 2017-11-20 |  |  |  |
| 61 | 15 | **82-Search Result搜索改进** | 1d | 2017-11-02 A | 2017-11-02 A |  | 100% |  |
| 62 |  | CMAPI配合 | 1d | 2017-11-02 A | 2017-11-02 A |  | 100% |  |
| 63 | 16 | **91-2 Task Monitor改进** | 1d | 2017-11-02 | 2017-11-02 |  |  | 0d |
| 64 |  | 测试 | 1d | 2017-11-02 | 2017-11-02 |  |  |  |
| 65 | 17 | **92-ENPS归档** | 1d | 2017-11-13 A | 2017-11-13 A |  | 100% |  |
| 66 |  | MOSGW实现 | 1d | 2017-11-13 A | 2017-11-13 A |  | 100% |  |
| 67 | 18 | **94-Growing file editing on Premiere during P2 file importing** | 39d | 2017-11-02 A | 2017-12-26 |  | 9% | 0d |
| 68 |  | File Import正在引入的P2多段素材支持上Premiere编辑 | 10d | 2017-12-13 | 2017-12-26 | 26 |  |  |
| 69 |  | CommonGW边引入边编辑的素材支持上Premiere编辑(same as V1.3.1) | 1d | 2017-11-02 A | 2017-11-02 A |  | 100% |  |
| 70 | 19 | **97-支持CS ML上面有Ding的功能** | 5d | 2017-11-22 | 2017-11-28 |  |  | 0d |

| ID | Task | Duration | Start | Finish | Predecessors |
| --- | --- | --- | --- | --- | --- |
| 71 | CMAPI接口实现 | 5d | 2017-11-22 | 2017-11-28 | 51 |
| 72 | CSML实现 | 1d | 2017-11-22 | 2017-11-22 |  |

## Version 2 (saved 2017-11-14)

Last finish stays 2017-12-28.

Added:

| ID | Task | Duration | Start | Finish | Resources |
| --- | --- | --- | --- | --- | --- |
| 64 | 任务添加到TM | 1d | 2017-11-02 | 2017-11-02 | 姚荣富 |
| 74 | **路透需求** | 1d | 2017-11-02 | 2017-11-02 |  |
| 75 | **1）Premiere预低合高流程** | 1d | 2017-11-02 | 2017-11-02 |  |
| 76 | **CMAPI** | 1d | 2017-11-02 | 2017-11-02 |  |
| 77 | 修改fcp xml的生成逻辑 | 1d | 2017-11-02 | 2017-11-02 | 叶亮 |
| 78 | 关联高低质量对应关系 | 1d | 2017-11-02 | 2017-11-02 | 叶亮 |
| 79 | 需要同时处理高低质量就绪，和采集中低质量长度大于高质量的情况 | 1d | 2017-11-02 | 2017-11-02 | 叶亮 |
| 80 | **Premiere插件：** | 1d | 2017-11-02 | 2017-11-02 |  |
| 81 | 代理功能逻辑修改 | 1d | 2017-11-02 | 2017-11-02 | 叶亮 |
| 82 | 新增bin里面素材文件路径替换 | 1d | 2017-11-02 | 2017-11-02 | 叶亮 |
| 83 | 2）FTP迁移流程 | 1d? | 2017-11-02 | 2017-11-02 |  |
| 84 | FTP迁移MPC协议构造 | 3d | 2017-11-15 | 2017-11-17 | 姚荣富 |

Changed:

| ID | Task | Other |
| --- | --- | --- |
| 15 | CMAPI接口实现(highpath, frameno, entity【post】) | was named CMAPI接口实现 |
| 47 | CMAPI接口实现（接口加参数是否立即发送，通过CM传的回调URL判断是否入TM） | was named CMAPI接口实现 |

## Version 3 (saved 2017-11-27)

Note of the change: php docker refect

Last finish stays 2017-12-28. Complete tasks 5 → 23.

Added:

| ID | Task | Duration | Start | Finish | Resources |
| --- | --- | --- | --- | --- | --- |
| 83 | 2) Remote Encoder | 10d | 2017-11-20 | 2017-12-01 | 叶亮 |
| 86 | RTV获取素材元数据优化 | 2d | 2017-11-27 | 2017-11-28 | 姚荣富 |
| 87 | **SNS调研** | 1d? | 2017-11-02 | 2017-11-02 |  |
| 88 | **FACEBOOK** | 1d? | 2017-11-02 | 2017-11-02 |  |
| 89 | 图片从草稿箱发出去 | 1d? | 2017-11-02 | 2017-11-02 | 毛远桥 |
| 90 | 视频从草稿箱发出去 | 1d? | 2017-11-02 | 2017-11-02 | 毛远桥 |
| 91 | 视频其他人看不到 | 1d? | 2017-11-02 | 2017-11-02 | 毛远桥 |
| 92 | 贴子删除 | 1d? | 2017-11-02 | 2017-11-02 | 毛远桥 |
| 93 | **TW** | 1d? | 2017-11-02 | 2017-11-02 |  |
| 94 | 大文件512MB | 1d? | 2017-11-02 | 2017-11-02 | 毛远桥 |
| 95 | 贴子删除 | 0d | 2017-11-02 | 2017-11-02 | 毛远桥 |
| 96 | **YOUTUBE** | 1d? | 2017-11-02 | 2017-11-02 |  |
| 97 | 加TAG | 1d? | 2017-11-02 | 2017-11-02 | 毛远桥 |
| 98 | 贴子删除 | 1d? | 2017-11-02 | 2017-11-02 | 毛远桥 |

Changed:

| ID | Task | Start | Finish | Duration | Complete | Total float | Predecessors | Other |
| --- | --- | --- | --- | --- | --- | --- | --- | --- |
| 1 | **9-Advance search needs to include customized metadata fields** | 2017-11-02 A |  |  | 0% → 33% |  |  |  |
| 2 | 元数据自定义CMAPI接口实现 | 2017-11-07 A | 2017-11-07 A |  | 0% → 100% |  |  |  |
| 5 | **11-Advance search needs to include customized metadata fields** |  |  |  | 0% → 33% |  |  |  |
| 6 | 元数据自定义CMAPI接口实现 |  | 2017-11-08 A |  | 0% → 100% |  |  |  |
| 13 | **37-WEB CM save current frame as Image from Hi-Res** | 2017-11-09 A |  |  | 0% → 88% |  |  |  |
| 14 | NJG接口实现（srcpath,dstpath,frameno,width,height）性能要求<1s | 2017-11-09 A | 2017-11-13 A |  | 0% → 100% |  |  |  |
| 15 | CMAPI接口实现(highpath, frameno, entity【post】) | 2017-11-09 A | 2017-11-14 A |  | 0% → 100% |  |  |  |
| 46 | **48-2 Ability to keep a record for SNS publish（drop）** | 2017-11-15 A |  |  | 0% → 100% |  |  | was named 48-2 Ability to keep a record for SNS publish |
| 47 | CMAPI接口实现（接口加参数是否立即发送，通过CM传的回调URL判断是否入TM） | 2017-11-15 A | 2017-11-17 A |  | 0% → 100% |  |  |  |
| 48 | SNS实现 | 2017-12-11 A | 2017-12-12 A |  | 0% → 100% |  |  |  |
| 49 | CMWEB实现 | 2017-11-15 A | 2017-11-15 A |  | 0% → 100% |  |  |  |
| 50 | **55-Save "SOM" "EOM" from Web CM** | 2017-11-03 A |  |  | 0% → 67% |  |  |  |
| 51 | CMAPI接口实现 | 2017-11-20 A | 2017-11-21 A |  | 0% → 100% |  |  |  |
| 59 | 72-Zeddis DM - Premiere /AE Plugin Installation | 2017-11-02 A | 2017-11-02 A |  | 0% → 100% |  |  |  |
| 60 | 75- Use HTTPS protocol in our web tools and any other HTTP connection | 2017-11-20 A | 2017-11-20 A |  | 0% → 100% |  |  |  |
| 63 | **91-2 Task Monitor改进** | 2017-11-02 A | 2017-11-02 A |  | 0% → 100% | 0d → none |  |  |
| 64 | 任务添加到TM | 2017-11-02 A | 2017-11-02 A |  | 0% → 100% |  |  |  |
| 65 | 测试 | 2017-11-02 A | 2017-11-02 A |  | 0% → 100% |  |  |  |
| 71 | **97-支持CS ML上面有Ding的功能** | 2017-11-22 → 2017-11-29 (+7d) | 2017-11-28 → 2017-12-05 (+7d) |  |  |  |  |  |
| 72 | CMAPI接口实现 | 2017-11-22 → 2017-11-29 (+7d) | 2017-11-28 → 2017-12-05 (+7d) |  |  |  | 51 → 86, 51 |  |
| 73 | CSML实现 | 2017-11-22 → 2017-11-29 (+7d) | 2017-11-22 → 2017-11-29 (+7d) |  |  |  |  |  |
| 74 | **路透需求** | 2017-11-02 A | 2017-11-02 → 2017-12-01 (+29d) | 1d → 22d | 0% → 44% |  |  |  |
| 75 | **1）Premiere预低合高流程** | 2017-11-02 A | 2017-11-02 A |  | 0% → 100% | 0d → none |  |  |
| 76 | **CMAPI** | 2017-11-02 A | 2017-11-02 A |  | 0% → 100% | 0d → none |  |  |
| 77 | 修改fcp xml的生成逻辑 | 2017-11-02 A | 2017-11-02 A |  | 0% → 100% |  |  |  |
| 78 | 关联高低质量对应关系 | 2017-11-02 A | 2017-11-02 A |  | 0% → 100% |  |  |  |
| 79 | 需要同时处理高低质量就绪，和采集中低质量长度大于高质量的情况 | 2017-11-02 A | 2017-11-02 A |  | 0% → 100% |  |  |  |
| 80 | **Premiere插件：** | 2017-11-02 A | 2017-11-02 A |  | 0% → 100% | 0d → none |  |  |
| 81 | 代理功能逻辑修改 | 2017-11-02 A | 2017-11-02 A |  | 0% → 100% |  |  |  |
| 82 | 新增bin里面素材文件路径替换 | 2017-11-02 A | 2017-11-02 A |  | 0% → 100% |  |  |  |
| 84 | **2）FTP迁移流程** | 2017-11-02 → 2017-11-15 A (+13d) | 2017-11-02 → 2017-11-17 A (+15d) | 1d? → 3d | 0% → 100% |  |  |  |
| 85 | FTP迁移MPC协议构造 | 2017-11-15 A | 2017-11-17 A |  | 0% → 100% |  |  |  |

## Version 4 (saved 2017-11-29)

Note of the change: Merge branch 'master' of https://github.com/xhu218/HelloWorld

Last finish stays 2017-12-28.

Added:

| ID | Task | Duration | Start | Finish | Resources |
| --- | --- | --- | --- | --- | --- |
| 28 | 42-JOVE SNS发布 | 1d? | 2017-11-02 | 2017-11-02 |  |
| 29 | SNS CMAPI接口实现 | 3d | 2017-12-06 | 2017-12-08 | 姚荣富 |
| 30 | JOVE界面实现 | 1d | 2017-11-02 | 2017-11-02 | 何德鹏 |

Changed:

| ID | Task | Start | Finish |
| --- | --- | --- | --- |
| 56 | **62-one generation** | 2017-11-29 → 2017-12-11 (+12d) | 2017-12-12 → 2017-12-22 (+10d) |
| 57 | save relation | 2017-11-29 → 2017-12-18 (+19d) | 2017-12-05 → 2017-12-22 (+17d) |
| 58 | get relation | 2017-12-06 → 2017-12-11 (+5d) | 2017-12-12 → 2017-12-15 (+3d) |
| 59 | delete relation（暂不考虑，方案需要与HIVE讨论） | 2017-11-29 → 2017-12-11 (+12d) | 2017-11-29 → 2017-12-11 (+12d) |

## Version 5 (saved 2017-12-05)

Last finish stays 2017-12-28.

Changed:

| ID | Task | Start | Finish | Duration | Total float |
| --- | --- | --- | --- | --- | --- |
| 28 | **42-JOVE SNS发布** | 2017-11-02 → 2017-12-06 (+34d) | 2017-11-02 → 2017-12-08 (+36d) | 1d? → 3d | none → 0d |
| 30 | JOVE界面实现 | 2017-11-02 → 2017-12-06 (+34d) | 2017-11-02 → 2017-12-06 (+34d) |  |  |

## Version 6 (saved 2017-12-11)

Last finish stays 2017-12-28. Complete tasks 23 → 30.

Added:

| ID | Task | Duration | Start | Finish | Resources |
| --- | --- | --- | --- | --- | --- |
| 12 | 配合姚航军修改PREMIERE代码 | 1d | 2017-11-02 | 2017-11-02 | 叶亮 |

Changed:

| ID | Task | Start | Finish | Complete | Other |
| --- | --- | --- | --- | --- | --- |
| 9 | **24-Adobe Premiere plugin: Rundown register** |  |  | 33% → 25% |  |
| 29 | **42-JOVE SNS发布** | 2017-12-06 A |  | 0% → 75% |  |
| 30 | SNS CMAPI接口实现 | 2017-12-06 A | 2017-12-08 A | 0% → 100% |  |
| 32 | **44-facebook publish support add link onto picture while publish the picture（DROP）** |  |  |  | was named 44-facebook publish support add link onto picture while publish the picture |
| 37 | **46-Hive must be able to add Headlines to videos published o social media (drop)** |  |  |  | was named 46-Hive must be able to add Headlines to videos published on social media |
| 44 | **47-Send to Twitter support clip duration> 30s** | 2017-11-29 A | 2017-12-08 A | 0% → 100% |  |
| 45 | **SNS接口实现** | 2017-11-29 A |  | 0% → 100% |  |
| 46 | upload_init | 2017-11-29 A | 2017-11-30 A | 0% → 100% |  |
| 47 | upload_append | 2017-12-01 A | 2017-12-04 A | 0% → 100% |  |
| 48 | upload_finalize | 2017-12-05 A | 2017-12-06 A | 0% → 100% |  |
| 49 | tweet | 2017-12-07 A | 2017-12-08 A | 0% → 100% |  |
| 75 | **97-支持CS ML上面有Ding的功能** | 2017-11-29 A |  | 0% → 83% |  |
| 76 | CMAPI接口实现 | 2017-11-29 A | 2017-12-05 A | 0% → 100% |  |
| 90 | RTV获取素材元数据优化（不需要同步到1.4） | 2017-11-27 A | 2017-11-28 A | 0% → 100% | was named RTV获取素材元数据优化 |

## Version 7 (saved 2017-12-18)

Last finish stays 2017-12-28. Complete tasks 30 → 26.

Added:

| ID | Task | Duration | Start | Finish |
| --- | --- | --- | --- | --- |
| 103 | 分享 | 1d? | 2017-11-02 | 2017-11-02 |
| 104 | 1.4 BUG | 1d? | 2017-11-02 | 2017-11-02 |
| 105 | 自定义元数据接口变更 | 1d? | 2017-11-02 | 2017-11-02 |

Changed:

| ID | Task | Start | Finish | Duration | Complete | Total float | Other |
| --- | --- | --- | --- | --- | --- | --- | --- |
| 9 | **24-Adobe Premiere plugin: Rundown register** |  |  |  | 25% → 33% |  |  |
| 28 | **42-JOVE SNS发布** | 2017-12-06 A → 2017-12-06 |  |  | 75% → 0% |  |  |
| 29 | SNS CMAPI接口实现 | 2017-12-06 A → 2017-12-06 | 2017-12-08 A → 2017-12-08 |  | 100% → 0% |  |  |
| 31 | **44-facebook publish support add link onto picture while publish the picture** |  |  |  |  |  | was named 44-facebook publish support add link onto picture while publish the picture（DROP） |
| 36 | **46-Hive must be able to add Headlines to videos published on social media** |  |  |  |  |  | was named 46-Hive must be able to add Headlines to videos published o social media (drop) |
| 43 | **47-Send to Twitter support clip duration> 30s** | 2017-11-29 A → 2017-11-29 | 2017-12-08 A → 2017-12-08 |  | 100% → 0% |  |  |
| 44 | **SNS接口实现** | 2017-11-29 A → 2017-11-29 |  |  | 100% → 0% |  |  |
| 45 | upload_init | 2017-11-29 A → 2017-11-29 | 2017-11-30 A → 2017-11-30 |  | 100% → 0% |  |  |
| 46 | upload_append | 2017-12-01 A → 2017-12-01 | 2017-12-04 A → 2017-12-04 |  | 100% → 0% |  |  |
| 47 | upload_finalize | 2017-12-05 A → 2017-12-05 | 2017-12-06 A → 2017-12-06 |  | 100% → 0% |  |  |
| 48 | tweet | 2017-12-07 A → 2017-12-07 | 2017-12-08 A → 2017-12-08 |  | 100% → 0% |  |  |
| 74 | **97-支持CS ML上面有Ding的功能** |  | 2017-12-05 A |  | 83% → 100% | 0d → none |  |
| 76 | CSML实现 | 2017-11-29 A | 2017-11-29 A |  | 0% → 100% |  |  |
| 89 | RTV获取素材元数据优化 |  |  |  |  |  | was named RTV获取素材元数据优化（不需要同步到1.4） |
| 102 | CCTV |  |  | 1d → 1d? |  |  | was named 配合姚航军修改PREMIERE代码; resources 叶亮 → none |
